# 需求变更开发进度

Schedule from MS Project, 2009-11-27 to 2009-12-20, A marks actual dates.
asiainfo

## Calendars

- 标准: Mon-Fri 08:00-12:00, 13:00-17:00; Sat-Sun off. Exceptions (off unless hours are given): 2009-11-28 to 2009-11-29 08:00-12:00, 13:00-17:00, 2009-12-05 to 2009-12-06 08:00-12:00, 13:00-17:00, 2009-12-12 to 2009-12-13 08:00-12:00, 13:00-17:00, 2009-12-19 to 2009-12-20 08:00-12:00, 13:00-17:00.
- Standard: Mon-Fri 08:00-12:00, 13:00-17:00; Sat-Sun off. Exceptions (off unless hours are given): 2009-12-05 to 2009-12-06 08:00-12:00, 13:00-17:00, 2009-12-12 to 2009-12-13 08:00-12:00, 13:00-17:00, 2009-12-19 to 2009-12-20 08:00-12:00, 13:00-17:00.

## Resources

| Resource |
| --- |
| Haiwu |
| Juping |

## Schedule

| ID | WBS | Task | Duration | Start | Finish | Predecessors | Complete | Remaining | Total slack | Free slack | Constraint | Calendar | Resources | Work | Actual work | Text1 |
| --- | --- | --- | --- | --- | --- | --- | --- | --- | --- | --- | --- | --- | --- | --- | --- | --- |
| 1 | 1 | **登陆页面修改** | 1d | 2009-11-27 A | 2009-11-27 A |  | 100% |  |  |  |  |  |  | 8h | 8h |  |
| 2 | 1.1 | 登陆页面修改 | 1d | 2009-11-27 A | 2009-11-27 A |  | 100% |  |  |  | start no earlier than 2009-11-27 |  | Haiwu | 8h | 8h | 已经完成 |
| 3 | 2 | **菜单调整** | 1d | 2009-12-02 A | 2009-12-02 A |  | 100% |  |  |  |  |  |  | 8h | 8h |  |
| 4 | 2.1 | 菜单调整 | 1d | 2009-12-02 A | 2009-12-02 A |  | 100% |  |  |  | start no earlier than 2009-12-02 |  | Juping | 8h | 8h | 已经完成 |
| 5 | 3 | **首页** | 5d | 2009-12-02 A | 2009-12-06 |  | 96% | 0.2d | 14d |  |  |  |  | 40h | 38.4h |  |
| 6 | 3.1 | 正在召开的会议 | 1d | 2009-12-02 A | 2009-12-02 A | 2 | 100% |  |  |  | start no earlier than 2009-12-02 |  | Haiwu | 8h | 8h | 已经完成 |
| 7 | 3.2 | 近一段时间的会议安排 | 2d | 2009-12-03 A | 2009-12-04 A | 6 | 100% |  |  |  |  |  | Haiwu | 16h | 16h | 已经完成 |
| 8 | 3.3 | 会议预约安排图 | 1d | 2009-12-05 A | 2009-12-05 | 7 | 80% | 0.2d | 15d |  | finish no earlier than 2009-12-05 | Standard | Haiwu | 8h | 6.4h |  |
| 9 | 3.4 | 弹出窗口的公告栏 | 1d | 2009-12-06 A | 2009-12-06 A | 8 | 100% |  |  |  | finish no earlier than 2009-12-06 | Standard | Haiwu | 8h | 8h | 已经完成 |
| 10 | 4 | **系统资源浏览** | 11d | 2009-12-07 | 2009-12-17 |  |  |  | 0d |  |  |  |  | 88h |  |  |
| 11 | 4.1 | MCU占用点数波动图 | 3d | 2009-12-07 | 2009-12-09 | 9 |  |  | 0d |  | start no earlier than 2009-12-05 |  | Haiwu | 24h |  |  |
| 12 | 4.2 | 用户使用次数排行 | 2d | 2009-12-10 | 2009-12-11 | 11 |  |  | 0d |  | start no earlier than 2009-12-08 |  | Haiwu | 16h |  |  |
| 13 | 4.3 | 会议统计次数排行 | 2d | 2009-12-12 | 2009-12-13 | 12 |  |  | 0d |  | start no earlier than 2009-12-10 |  | Haiwu | 16h |  |  |
| 14 | 4.4 | 各类型会议时间长度统计 | 1d | 2009-12-14 | 2009-12-14 | 13 |  |  | 0d |  | finish no earlier than 2009-12-13 | Standard | Haiwu | 8h |  |  |
| 15 | 4.5 | 各会场会议时间长度统计 | 1d | 2009-12-15 | 2009-12-15 | 14 |  |  | 0d |  | finish no earlier than 2009-12-14 |  | Haiwu | 8h |  |  |
| 16 | 4.6 | 会议持续时间前10名统计 | 2d | 2009-12-16 | 2009-12-17 | 15 |  |  | 0d |  | start no earlier than 2009-12-15 |  | Haiwu | 16h |  |  |
| 17 | 5 | **个人会议预约** | 12d | 2009-12-08 A | 2009-12-19 |  | 40% | 7.18d | 1d |  |  |  |  | 40h | 16.08h |  |
| 18 | 5.1 | 为用户设定默认主会场及限制可选会场范围 | 1d | 2009-12-18 | 2009-12-18 | 16 |  |  | 0d |  | start no earlier than 2009-12-18 |  | Haiwu | 8h |  |  |
| 19 | 5.2 | 表单模板 | 3d | 2009-12-08 A | 2009-12-14 | 23 | 67% | 0.99d | 6.99d |  | start no earlier than 2009-12-08 |  | Juping | 24h | 16.08h |  |
| 20 | 5.3 | 预约会议表单项变更 | 1d | 2009-12-19 | 2009-12-19 | 18 |  |  | 0d |  | start no earlier than 2009-12-19 | Standard | Haiwu | 8h |  |  |
| 21 | 6 | **权限调整** | 18d | 2009-12-03 A | 2009-12-20 |  | 10% | 16.2d | 0d |  |  |  |  | 88h | 8h |  |
| 22 | 6.1 | 权限调整 | 1d | 2009-12-20 | 2009-12-20 | 20 |  |  | 0d |  | start no earlier than 2009-12-20 | Standard | Juping; Haiwu | 16h |  |  |
| 23 | 6.2 | 需求 | 9d | 2009-12-03 A | 2009-12-11 | 4 | 11% | 8d | 7.99d | 0d | finish no earlier than 2009-12-11 |  | Juping | 72h | 8h |  |
| 24 | 7 | **系统优化** | 5d | 2009-12-05 A | 2009-12-09 |  | 60% | 2d | 11d |  |  |  |  | 40h | 24h |  |
| 25 | 7.1 | LOG输出优化 | 2d | 2009-12-05 A | 2009-12-06 A |  | 100% |  |  |  | start no earlier than 2009-12-05 | Standard | Juping | 16h | 16h |  |
| 26 | 7.2 | 集成优化 | 3d | 2009-12-07 A | 2009-12-09 |  | 33% | 2d | 11d |  | start no earlier than 2009-11-03 |  | Juping | 24h | 8h |  |
